# پروژه قطعه سازی

Schedule from MS Project, 2024-09-25 to 2024-12-12.

## Calendars

- Standard: Mon-Thu 08:00-12:00, 13:00-17:00; Fri off; Sat-Sun 08:00-12:00, 13:00-17:00.

## Schedule

| ID | WBS | Task | Duration | Start | Finish | Predecessors | Total slack | Free slack |
| --- | --- | --- | --- | --- | --- | --- | --- | --- |
| 1 | 1 | **طراحی** | 27d | 2024-09-25 | 2024-10-26 |  | 0d |  |
| 2 | 1.1 | **تهیه مدل کلی** | 8d | 2024-09-25 | 2024-10-03 |  | 0d |  |
| 3 | 1.1.1 | اخذ مشخصات کلی | 3d | 2024-09-25 | 2024-09-28 |  | 0d |  |
| 4 | 1.1.2 | تهیه طرح شماتیک دستی | 4d | 2024-09-29 | 2024-10-02 | 3 | 0d |  |
| 5 | 1.1.3 | اخذ تاییدیه اولیه | 1d | 2024-10-03 | 2024-10-03 | 4 | 0d |  |
| 6 | 1.2 | **طراحی و شبیه سازی** | 19d | 2024-10-05 | 2024-10-26 | 2 | 0d |  |
| 7 | 1.2.1 | **طراحی بدنه** | 13d | 2024-10-05 | 2024-10-19 |  | 0d |  |
| 8 | 1.2.1.1 | طراحی کلی بدنه | 5d | 2024-10-05 | 2024-10-09 |  | 0d |  |
| 9 | 1.2.1.2 | اخذ تاییدیه | 2d | 2024-10-10 | 2024-10-12 | 8 | 0d |  |
| 10 | 1.2.1.3 | طراحی جزئییات و رندرینگ | 6d | 2024-10-13 | 2024-10-19 | 9 | 0d |  |
| 11 | 1.2.2 | **طراحی اجزا** | 11d | 2024-10-13 | 2024-10-24 |  | 1d |  |
| 12 | 1.2.2.1 | طراحی اجزا فلزی | 3d | 2024-10-13 | 2024-10-15 | 9 | 1d | 0d |
| 13 | 1.2.2.2 | طراحی اجزا پلاستیکی | 5d | 2024-10-15 | 2024-10-20 | 12SS+2d | 3d | 2d |
| 14 | 1.2.2.3 | طراحی مدارات الکترونیکی | 8d | 2024-10-16 | 2024-10-24 | 12 | 1d |  |
| 15 | 1.2.3 | **انجام تست های شبیه سازی** | 6d | 2024-10-20 | 2024-10-26 |  | 0d |  |
| 16 | 1.2.3.1 | شبیه سازی فشار و حرارت بدنه | 3d | 2024-10-20 | 2024-10-22 | 10 | 0d |  |
| 17 | 1.2.3.2 | شبیه سازی فشارو حرارت اجزا فلزی | 3d | 2024-10-23 | 2024-10-26 | 16, 12 | 0d |  |
| 18 | 1.2.3.3 | شبیه سازی فشار و حرارت اجزا پلاستیکی | 2d | 2024-10-23 | 2024-10-24 | 16, 13 | 1d |  |
| 19 | 2 | **تهیه ملزومات** | 8d | 2024-10-27 | 2024-11-04 | 1 | 0d |  |
| 20 | 2.1 | **تهیه قطعات الکترونیکی** | 7d | 2024-10-27 | 2024-11-03 |  | 1d |  |
| 21 | 2.1.1 | تهیه لیست | 2d | 2024-10-27 | 2024-10-28 |  | 1d | 0d |
| 22 | 2.1.2 | استعلام | 1d | 2024-10-29 | 2024-10-29 | 21 | 1d | 0d |
| 23 | 2.1.3 | خرید | 1d | 2024-11-03 | 2024-11-03 | 22FS+3d | 1d |  |
| 24 | 2.2 | **تهیه قطعات فلزی** | 8d | 2024-10-27 | 2024-11-04 |  | 0d |  |
| 25 | 2.2.1 | تهیه لیست | 2d | 2024-10-27 | 2024-10-28 |  | 0d |  |
| 26 | 2.2.2 | استعلام | 1d | 2024-10-29 | 2024-10-29 | 25 | 0d |  |
| 27 | 2.2.3 | خرید | 1d | 2024-11-03 | 2024-11-03 | 26FS+3d | 0d |  |
| 28 | 2.2.4 | انتقال | 1d | 2024-11-04 | 2024-11-04 | 27 | 0d |  |

| ID | WBS | Task | Duration | Start | Finish | Predecessors | Total slack | Free slack |
| --- | --- | --- | --- | --- | --- | --- | --- | --- |
| 29 | 3 | **ساخت** | 33d | 2024-11-05 | 2024-12-12 | 19 | 0d |  |
| 30 | 3.1 | **ساخت قطعات فلزی** | 22d | 2024-11-05 | 2024-11-30 |  | 0d |  |
| 31 | 3.1.1 | قالب سازی | 15d | 2024-11-05 | 2024-11-21 |  | 0d |  |
| 32 | 3.1.2 | ریخته گری | 2d | 2024-11-23 | 2024-11-24 | 31 | 0d |  |
| 33 | 3.1.3 | تراشکاری | 3d | 2024-11-25 | 2024-11-27 | 32 | 0d |  |
| 34 | 3.1.4 | سوراخ کاری و قلاویز | 2d | 2024-11-28 | 2024-11-30 | 33 | 0d |  |
| 35 | 3.2 | **ساخت قطعات پلاستیکی** | 33d | 2024-11-05 | 2024-12-12 |  | 0d |  |
| 36 | 3.2.1 | قالب سازی | 10d | 2024-11-05 | 2024-11-16 |  | 18d | 0d |
| 37 | 3.2.2 | تزریق پلاستیک | 3d | 2024-11-17 | 2024-11-19 | 36 | 18d | 0d |
| 38 | 3.2.3 | تراشکاری و سوراخ کاری | 2d | 2024-11-20 | 2024-11-21 | 37 | 18d |  |
| 39 | 3.2.4 | **مونتاژ نهایی** | 11d | 2024-12-01 | 2024-12-12 | 30 | 0d |  |
| 40 | 3.2.4.1 | سوار کردن قطعات فلزی روی بدنه | 4d | 2024-12-01 | 2024-12-04 |  | 0d |  |
| 41 | 3.2.4.2 | سوار کردن قطعات پلاستیکی روی بدنه | 2d | 2024-12-05 | 2024-12-07 | 40 | 0d |  |
| 42 | 3.2.4.3 | نصب قطعات الکترونیکی | 3d | 2024-12-08 | 2024-12-10 | 41 | 0d |  |
| 43 | 3.2.4.4 | تست مکانیکی | 1d | 2024-12-11 | 2024-12-11 | 42 | 0d |  |
| 44 | 3.2.4.5 | تست اولیه | 1d | 2024-12-12 | 2024-12-12 | 43 | 0d |  |
